# Meridian Olefins - Unit 40 Expansion

Schedule from Primavera P6, 2026-09-07 to 2027-04-19, data date 2026-11-02, A marks actual dates.

## Resources

| Resource | Group |
| --- | --- |
| Craft labor | labor |

## Schedule

| ID | WBS | Activity | Type | Duration | Start | Finish | Complete | Remaining | Planned start | Planned finish | Resources | Discipline | System |
| --- | --- | --- | --- | --- | --- | --- | --- | --- | --- | --- | --- | --- | --- |
|  | U40 | **Unit 40** |  |  | 2026-09-07 | 2027-04-19 |  |  |  |  |  |  |  |
|  | CIV | **Civil** |  |  | 2026-09-07 | 2027-01-29 |  |  |  |  |  |  |  |
| CIV-0010 |  | Excavation and foundations - furnace area |  | 25d | 2026-09-07 A | 2026-10-12 A | 100% |  | 2026-09-07 | 2026-10-09 | Craft labor [4200 h] | CIVI | 40-01 |
| CIV-0020 |  | Underground piping and duct bank |  | 30d | 2026-09-21 A | 2026-11-01 A | 100% |  | 2026-09-21 | 2026-10-30 | Craft labor [3100 h] | CIVI | 40-01 |
| CIV-0030 |  | Equipment foundations - compressor house |  | 30d | 2026-10-05 A | 2026-11-13 | 70% | 9d |  |  | Craft labor [5200 h] | CIVI | 40-01 |
| CIV-0040 |  | Paving and grading |  | 20d | 2027-01-04 | 2027-01-29 |  |  |  |  | Craft labor [1800 h] | CIVI | 40-01 |
|  | ELE | **Electrical** |  |  | 2026-12-14 | 2027-04-02 |  |  |  |  |  |  |  |
| ELE-0010 |  | Cable tray installation |  | 35d | 2026-12-14 | 2027-01-29 |  |  |  |  | Craft labor [3600 h] | ELEC | 40-04 |
| ELE-0020 |  | Cable pulling |  | 40d | 2027-01-18 | 2027-03-12 |  |  |  |  | Craft labor [6800 h] | ELEC | 40-04 |
| ELE-0030 |  | Terminations and megger |  | 30d | 2027-02-22 | 2027-04-02 |  |  |  |  | Craft labor [3900 h] | ELEC | 40-04 |
|  | INS | **Instrumentation** |  |  | 2027-01-04 | 2027-04-09 |  |  |  |  |  |  |  |
| INS-0010 |  | Instrument stands and supports |  | 25d | 2027-01-04 | 2027-02-05 |  |  |  |  | Craft labor [1900 h] | INST | 40-05 |
| INS-0020 |  | Tubing and impulse lines |  | 40d | 2027-01-25 | 2027-03-19 |  |  |  |  | Craft labor [4700 h] | INST | 40-05 |
| INS-0030 |  | Loop checks |  | 25d | 2027-03-08 | 2027-04-09 |  |  |  |  | Craft labor [3100 h] | INST | 40-05 |
|  | MEC | **Mechanical Equipment** |  |  | 2026-11-23 | 2027-02-05 |  |  |  |  |  |  |  |
| MEC-0020 |  | Set exchangers and drums |  | 25d | 2026-11-23 | 2026-12-25 |  |  |  |  | Craft labor [3300 h] | MECH | 40-02 |
| MEC-0010 |  | Set charge gas compressor |  | 15d | 2026-11-30 | 2026-12-18 |  |  |  |  | Craft labor [2200 h] | MECH | 40-02 |
| MEC-0030 |  | Set pumps and align |  | 25d | 2026-12-21 | 2027-01-22 |  |  |  |  | Craft labor [2400 h] | MECH | 40-02 |
| MEC-0040 |  | Column internals |  | 30d | 2026-12-28 | 2027-02-05 |  |  |  |  | Craft labor [2900 h] | MECH | 40-02 |
|  | MS | **Milestones** |  |  | 2026-09-07 | 2027-04-19 |  |  |  |  |  |  |  |
| MS-0010 |  | Notice to proceed | milestone | 0d | 2026-09-07 A | 2026-09-07 A | 100% |  |  |  |  |  |  |
| MS-0900 |  | Mechanical completion - Unit 40 | milestone | 0d | 2027-04-19 | 2027-04-19 |  |  |  |  |  |  |  |
|  | PIP | **Piping** |  |  | 2026-10-20 | 2027-04-02 |  |  |  |  |  |  |  |
| PIP-0010 |  | Shop spool fabrication receipt |  | 40d | 2026-10-20 A | 2026-12-23 | 21% | 31.52d | 2026-10-19 | 2026-12-11 | Craft labor [1500 h] | PIPI | 40-03 |
| PIP-0020 |  | Rack piping installation |  | 55d | 2026-12-14 | 2027-02-26 |  |  |  |  | Craft labor [14800 h] | PIPI | 40-03 |
| PIP-0030 |  | Equipment hook-up piping |  | 45d | 2027-01-11 | 2027-03-12 |  |  |  |  | Craft labor [11200 h] | PIPI | 40-03 |
| PIP-0040 |  | Hydrotest and reinstatement |  | 25d | 2027-03-01 | 2027-04-02 |  |  |  |  | Craft labor [4300 h] | PIPI | 40-03 |

| ID | WBS | Activity | Duration | Start | Finish | Complete | Remaining | Planned start | Planned finish | Resources | Discipline | System |
| --- | --- | --- | --- | --- | --- | --- | --- | --- | --- | --- | --- | --- |
|  | STR | **Structural Steel** |  | 2026-10-27 | 2027-01-29 |  |  |  |  |  |  |  |
| STR-0010 |  | Pipe rack steel erection - rack A | 30d | 2026-10-27 A | 2026-12-10 | 15% | 25.41d | 2026-10-26 | 2026-12-04 | Craft labor [6400 h] | STRU | 40-01 |
| STR-0030 |  | Compressor house steel | 25d | 2026-11-09 | 2026-12-11 |  |  |  |  | Craft labor [3800 h] | STRU | 40-01 |
| STR-0020 |  | Pipe rack steel erection - rack B | 30d | 2026-11-16 | 2026-12-25 |  |  |  |  | Craft labor [5900 h] | STRU | 40-01 |
| STR-0040 |  | Platforms, ladders and grating | 25d | 2026-12-28 | 2027-01-29 |  |  |  |  | Craft labor [2600 h] | STRU | 40-01 |

## Activity codes

| Code | Value | Meaning |
| --- | --- | --- |
| Discipline | CIVI | Civil |
| Discipline | ELEC | Electrical |
| Discipline | INST | Instrumentation |
| Discipline | MECH | Mechanical |
| Discipline | PIPI | Piping |
| Discipline | STRU | Structural |
| System | 40-01 | System 40-01 |
| System | 40-02 | System 40-02 |
| System | 40-03 | System 40-03 |
| System | 40-04 | System 40-04 |
| System | 40-05 | System 40-05 |
